# 循环器具系统开发计划

How a schedule from a web Gantt chart changed from version to version. A marks actual dates.

## Version 1 (saved 2025-12-14)

| ID | WBS | Task | Duration | Start | Finish | Complete |
| --- | --- | --- | --- | --- | --- | --- |
| 2 |  | 包装数据维护功能 | 1d | 2025-11-17 | 2025-11-17 | 100% |
| 3 |  | 包装-物料数据维护功能 | 1d | 2025-11-18 | 2025-11-18 | 100% |
| 4 |  | 投入入库/撤销流程搭建+定制开发 | 3d | 2025-11-19 | 2025-11-21 | 100% |
| 5 |  | 领用/退回流程搭建+定制开发 | 2d | 2025-11-24 | 2025-11-25 | 30% |
| 6 |  | 空箱调拨/返空流程+定制开发 | 2d | 2025-11-26 | 2025-11-27 | 30% |
| 7 | 6 | **满箱入库/退回流程** | 10d | 2025-11-28 | 2025-12-11 |  |
| 8 |  | 入库/退回流程搭建 | 1d | 2025-11-28 | 2025-11-28 |  |
| 9 |  | 满箱入库接口 | 2d | 2025-11-28 | 2025-12-01 |  |
| 10 |  | PDA EDI收货改造 | 2d | 2025-12-02 | 2025-12-03 |  |
| 11 |  | 包装台组托入库接口改造 | 2d | 2025-12-03 | 2025-12-04 |  |
| 12 |  | PDA直采件上架改造 | 2d | 2025-12-04 | 2025-12-05 |  |
| 13 |  | PDA验货改造 | 2d | 2025-12-05 | 2025-12-08 |  |
| 14 |  | 返工指令下达流程改造 | 2d | 2025-12-08 | 2025-12-09 |  |
| 15 |  | 采购负数申请流程改造 | 2d | 2025-12-09 | 2025-12-10 |  |
| 16 |  | 采购退货处理流程改造 | 2d | 2025-12-10 | 2025-12-11 |  |
| 17 | 7 | **调拨/出库流程** | 5d | 2025-12-12 | 2025-12-18 |  |
| 18 |  | 搭建出库和调拨流程 | 1d | 2025-12-12 | 2025-12-12 |  |
| 19 |  | 日发货计划流程改造 | 2d | 2025-12-12 | 2025-12-15 |  |
| 20 |  | 驻外仓退回出库流程改造 | 2d | 2025-12-15 | 2025-12-16 |  |
| 21 |  | 客户VMI退回流程改造 | 2d | 2025-12-16 | 2025-12-17 |  |
| 22 |  | PDA装车确认改造 | 2d | 2025-12-17 | 2025-12-18 |  |
| 23 |  | 历史交付数转换循环箱数报表 | 2d | 2025-12-19 | 2025-12-22 |  |
| 24 |  | 未来需求数转换循环箱数报表 | 2d | 2025-12-23 | 2025-12-24 |  |
| 25 |  | 生产周计划转换循环箱数报表 | 2d | 2025-12-25 | 2025-12-26 |  |
| 26 |  | 全链条库存数据报表 | 2d | 2025-12-29 | 2025-12-30 |  |
| 27 | 12 | **循环箱系统测试计划** | 12d | 2025-12-22 | 2026-01-06 |  |
| 28 |  | 基础数据维护功能测试 | 1d | 2025-12-22 | 2025-12-22 |  |
| 29 |  | 投入入库/撤销流程测试 | 1d | 2025-12-23 | 2025-12-23 |  |
| 30 |  | 领用/退回流程测试 | 1d | 2025-12-24 | 2025-12-24 |  |
| 31 |  | 空箱调拨/返空测试 | 1d | 2025-12-25 | 2025-12-25 |  |
| 32 |  | 满箱入库/退回测试 | 2d | 2025-12-26 | 2025-12-29 |  |
| 33 |  | 满箱出库/调拨测试 | 2d | 2025-12-30 | 2025-12-31 |  |
| 34 |  | 数据台账测试 | 3d | 2026-01-02 | 2026-01-06 |  |

## Version 2 (saved 2025-12-24)

Last finish 2026-01-06 → 2026-01-30 (+24d).

Changed:

| ID | Task | Start | Finish | Duration | Complete |
| --- | --- | --- | --- | --- | --- |
| 5 | 领用/退回流程搭建+定制开发 | 2025-11-24 → 2025-12-22 (+28d) | 2025-11-25 → 2025-12-23 (+28d) |  | 30% → 50% |
| 6 | 空箱调拨/返空流程+定制开发 | 2025-11-26 → 2025-12-24 (+28d) | 2025-11-27 → 2025-12-25 (+28d) |  | 30% → 50% |
| 7 | **满箱入库/退回流程** | 2025-11-28 → 2025-12-26 (+28d) | 2025-12-11 → 2026-01-12 (+32d) | 10d → 12d |  |
| 8 | 入库/退回流程搭建 | 2025-11-28 → 2025-12-26 (+28d) | 2025-11-28 → 2025-12-26 (+28d) |  |  |
| 9 | 满箱入库接口 | 2025-11-28 → 2025-12-26 (+28d) | 2025-12-01 → 2025-12-29 (+28d) |  |  |
| 10 | PDA EDI收货改造 | 2025-12-02 → 2025-12-30 (+28d) | 2025-12-03 → 2025-12-31 (+28d) |  |  |
| 11 | 包装台组托入库接口改造 | 2025-12-03 → 2025-12-31 (+28d) | 2025-12-04 → 2026-01-01 (+28d) |  |  |
| 12 | PDA直采件上架改造 | 2025-12-04 → 2026-01-05 (+32d) | 2025-12-05 → 2026-01-06 (+32d) |  |  |
| 13 | PDA验货改造 | 2025-12-05 → 2026-01-06 (+32d) | 2025-12-08 → 2026-01-07 (+30d) |  |  |
| 14 | 返工指令下达流程改造 | 2025-12-08 → 2026-01-07 (+30d) | 2025-12-09 → 2026-01-08 (+30d) |  |  |
| 15 | 采购负数申请流程改造 | 2025-12-09 → 2026-01-08 (+30d) | 2025-12-10 → 2026-01-09 (+30d) |  |  |
| 16 | 采购退货处理流程改造 | 2025-12-10 → 2026-01-09 (+30d) | 2025-12-11 → 2026-01-12 (+32d) |  |  |
| 17 | **调拨/出库流程** | 2025-12-12 → 2026-01-13 (+32d) | 2025-12-18 → 2026-01-19 (+32d) |  |  |
| 18 | 搭建出库和调拨流程 | 2025-12-12 → 2026-01-13 (+32d) | 2025-12-12 → 2026-01-13 (+32d) |  |  |
| 19 | 日发货计划流程改造 | 2025-12-12 → 2026-01-13 (+32d) | 2025-12-15 → 2026-01-14 (+30d) |  |  |
| 20 | 驻外仓退回出库流程改造 | 2025-12-15 → 2026-01-14 (+30d) | 2025-12-16 → 2026-01-15 (+30d) |  |  |
| 21 | 客户VMI退回流程改造 | 2025-12-16 → 2026-01-15 (+30d) | 2025-12-17 → 2026-01-16 (+30d) |  |  |
| 22 | PDA装车确认改造 | 2025-12-17 → 2026-01-16 (+30d) | 2025-12-18 → 2026-01-19 (+32d) |  |  |
| 23 | 历史交付数转换循环箱数报表 | 2025-12-19 → 2026-01-20 (+32d) | 2025-12-22 → 2026-01-21 (+30d) |  |  |
| 24 | 未来需求数转换循环箱数报表 | 2025-12-23 → 2026-01-22 (+30d) | 2025-12-24 → 2026-01-23 (+30d) |  |  |
| 25 | 生产周计划转换循环箱数报表 | 2025-12-25 → 2026-01-26 (+32d) | 2025-12-26 → 2026-01-27 (+32d) |  |  |
| 26 | 全链条库存数据报表 | 2025-12-29 → 2026-01-28 (+30d) | 2025-12-30 → 2026-01-29 (+30d) |  |  |
| 27 | **循环箱系统测试计划** | 2025-12-22 → 2026-01-16 (+25d) | 2026-01-06 → 2026-01-30 (+24d) | 12d → 11d |  |
| 28 | 基础数据维护功能测试 | 2025-12-22 → 2026-01-16 (+25d) | 2025-12-22 → 2026-01-16 (+25d) |  |  |
| 29 | 投入入库/撤销流程测试 | 2025-12-23 → 2026-01-19 (+27d) | 2025-12-23 → 2026-01-19 (+27d) |  |  |
| 30 | 领用/退回流程测试 | 2025-12-24 → 2026-01-20 (+27d) | 2025-12-24 → 2026-01-20 (+27d) |  |  |
| 31 | 空箱调拨/返空测试 | 2025-12-25 → 2026-01-21 (+27d) | 2025-12-25 → 2026-01-21 (+27d) |  |  |
| 32 | 满箱入库/退回测试 | 2025-12-26 → 2026-01-22 (+27d) | 2025-12-29 → 2026-01-23 (+25d) |  |  |
| 33 | 满箱出库/调拨测试 | 2025-12-30 → 2026-01-26 (+27d) | 2025-12-31 → 2026-01-27 (+27d) |  |  |
| 34 | 数据台账测试 | 2026-01-02 → 2026-01-28 (+26d) | 2026-01-06 → 2026-01-30 (+24d) |  |  |

## Version 3 (saved 2025-12-26)

Last finish stays 2026-01-30. Complete tasks 3 → 5.

Changed:

| ID | Task | Complete |
| --- | --- | --- |
| 5 | 领用/退回流程搭建+定制开发 | 50% → 100% |
| 6 | 空箱调拨/返空流程+定制开发 | 50% → 100% |

## Version 4 (saved 2025-12-29)

Last finish stays 2026-01-30. Complete tasks 5 → 6.

Changed:

| ID | Task | Complete |
| --- | --- | --- |
| 7 | **满箱入库/退回流程** | 0% → 6% |
| 8 | 入库/退回流程搭建 | 0% → 100% |

## Version 5 (saved 2025-12-30)

Last finish stays 2026-01-30. Complete tasks 6 → 7.

Changed:

| ID | Task | Complete |
| --- | --- | --- |
| 7 | **满箱入库/退回流程** | 6% → 21% |
| 9 | 满箱入库接口 | 0% → 30% |
| 11 | 包装台组托入库接口改造 | 0% → 100% |

## Version 6 (saved 2026-01-07)

Last finish stays 2026-01-30. Complete tasks 7 → 9.

Changed:

| ID | Task | Complete |
| --- | --- | --- |
| 7 | **满箱入库/退回流程** | 21% → 64% |
| 9 | 满箱入库接口 | 30% → 100% |
| 10 | PDA EDI收货改造 | 0% → 100% |
| 12 | PDA直采件上架改造 | 0% → 80% |
| 13 | PDA验货改造 | 0% → 80% |
| 14 | 返工指令下达流程改造 | 0% → 30% |

## Version 7 (saved 2026-01-13)

Last finish stays 2026-01-30. Complete tasks 9 → 13.

Changed:

| ID | Task | Complete |
| --- | --- | --- |
| 7 | **满箱入库/退回流程** | 64% → 95% |
| 11 | 包装台组托入库接口改造 | 100% → 80% |
| 12 | PDA直采件上架改造 | 80% → 100% |
| 14 | 返工指令下达流程改造 | 30% → 100% |
| 15 | 采购负数申请流程改造 | 0% → 100% |
| 16 | 采购退货处理流程改造 | 0% → 100% |
| 17 | **调拨/出库流程** | 0% → 11% |
| 18 | 搭建出库和调拨流程 | 0% → 100% |

## Version 8 (saved 2026-01-16)

Last finish stays 2026-01-30. Complete tasks 13 → 18.

Added:

| ID | Task | Duration | Start | Finish |
| --- | --- | --- | --- | --- |
| 20 | 驻外实体仓库出库流程改造 | 2d | 2026-01-13 | 2026-01-14 |

Changed:

| ID | Task | Complete |
| --- | --- | --- |
| 7 | **满箱入库/退回流程** | 95% → 100% |
| 11 | 包装台组托入库接口改造 | 80% → 100% |
| 13 | PDA验货改造 | 80% → 100% |
| 17 | **调拨/出库流程** | 11% → 64% |
| 21 | 驻外仓退回出库流程改造 | 0% → 100% |
| 22 | 客户VMI退回流程改造 | 0% → 100% |

## Version 9 (saved 2026-01-21)

Last finish stays 2026-01-30. Complete tasks 18 → 19.

Changed:

| ID | Task | Complete |
| --- | --- | --- |
| 17 | **调拨/出库流程** | 64% → 93% |
| 19 | 日发货计划流程改造 | 0% → 100% |
| 23 | PDA装车确认改造 | 0% → 60% |

## Version 10 (saved 2026-01-29)

Last finish stays 2026-01-30. Complete tasks 19 → 23.

Changed:

| ID | Task | Complete |
| --- | --- | --- |
| 24 | 历史交付数转换循环箱数报表 | 0% → 100% |
| 25 | 未来需求数转换循环箱数报表 | 0% → 100% |
| 26 | 生产周计划转换循环箱数报表 | 0% → 100% |
| 27 | 全链条库存数据报表 | 0% → 100% |

## Version 11 (saved 2026-06-02)

Last finish stays 2026-01-30. Complete tasks 23 → 24.

Changed:

| ID | Task | Complete |
| --- | --- | --- |
| 17 | **调拨/出库流程** | 93% → 100% |
| 23 | PDA装车确认改造 | 60% → 100% |
