# 循环器具系统开发计划

How a schedule from a web Gantt chart changed from version to version. A marks actual dates.

## Version 1 (saved 2025-11-14)

| ID | WBS | Task | Duration | Start | Finish |
| --- | --- | --- | --- | --- | --- |
| 2 |  | 包装数据维护功能 | 1d | 2025-11-17 | 2025-11-17 |
| 3 |  | 包装-物料数据维护功能 | 1d | 2025-11-18 | 2025-11-18 |
| 4 |  | 投入入库/撤销流程搭建+定制开发 | 3d | 2025-11-19 | 2025-11-21 |
| 5 |  | 领用/退回流程搭建+定制开发 | 2d | 2025-11-24 | 2025-11-25 |
| 6 |  | 空箱调拨/返空流程+定制开发 | 2d | 2025-11-26 | 2025-11-27 |
| 7 | 6 | **满箱入库/退回流程** | 10d | 2025-11-28 | 2025-12-11 |
| 8 |  | 入库/退回流程搭建 | 1d | 2025-11-28 | 2025-11-28 |
| 9 |  | 满箱入库接口 | 2d | 2025-11-28 | 2025-12-01 |
| 10 |  | PDA EDI收货改造 | 2d | 2025-12-02 | 2025-12-03 |
| 11 |  | 包装台组托入库接口改造 | 2d | 2025-12-03 | 2025-12-04 |
| 12 |  | PDA直采件上架改造 | 2d | 2025-12-04 | 2025-12-05 |
| 13 |  | PDA验货改造 | 2d | 2025-12-05 | 2025-12-08 |
| 14 |  | 返工指令下达流程改造 | 2d | 2025-12-08 | 2025-12-09 |
| 15 |  | 采购负数申请流程改造 | 2d | 2025-12-09 | 2025-12-10 |
| 16 |  | 采购退货处理流程改造 | 2d | 2025-12-10 | 2025-12-11 |
| 17 | 7 | **调拨/出库流程** | 5d | 2025-12-12 | 2025-12-18 |
| 18 |  | 搭建出库和调拨流程 | 1d | 2025-12-12 | 2025-12-12 |
| 19 |  | 日发货计划流程改造 | 2d | 2025-12-12 | 2025-12-15 |
| 20 |  | 驻外仓退回出库流程改造 | 2d | 2025-12-15 | 2025-12-16 |
| 21 |  | 客户VMI退回流程改造 | 2d | 2025-12-16 | 2025-12-17 |
| 22 |  | PDA装车确认改造 | 2d | 2025-12-17 | 2025-12-18 |
| 23 |  | 历史交付数转换循环箱数报表 | 2d | 2025-12-19 | 2025-12-22 |
| 24 |  | 未来需求数转换循环箱数报表 | 2d | 2025-12-23 | 2025-12-24 |
| 25 |  | 生产周计划转换循环箱数报表 | 2d | 2025-12-25 | 2025-12-26 |
| 26 |  | 全链条库存数据报表 | 2d | 2025-12-29 | 2025-12-30 |
| 27 | 12 | **循环箱系统测试计划** | 12d | 2025-12-22 | 2026-01-06 |
| 28 |  | 基础数据维护功能测试 | 1d | 2025-12-22 | 2025-12-22 |
| 29 |  | 投入入库/撤销流程测试 | 1d | 2025-12-23 | 2025-12-23 |
| 30 |  | 领用/退回流程测试 | 1d | 2025-12-24 | 2025-12-24 |
| 31 |  | 空箱调拨/返空测试 | 1d | 2025-12-25 | 2025-12-25 |
| 32 |  | 满箱入库/退回测试 | 2d | 2025-12-26 | 2025-12-29 |
| 33 |  | 满箱出库/调拨测试 | 2d | 2025-12-30 | 2025-12-31 |
| 34 |  | 数据台账测试 | 3d | 2026-01-02 | 2026-01-06 |

## Version 2 (saved 2025-11-21)

Last finish stays 2026-01-06. Complete tasks 0 → 1.

Changed:

| ID | Task | Complete |
| --- | --- | --- |
| 2 | 包装数据维护功能 | 0% → 100% |

## Version 3 (saved 2025-11-26)

Last finish stays 2026-01-06. Complete tasks 1 → 2.

Changed:

| ID | Task | Complete |
| --- | --- | --- |
| 3 | 包装-物料数据维护功能 | 0% → 100% |
| 4 | 投入入库/撤销流程搭建+定制开发 | 0% → 50% |
| 5 | 领用/退回流程搭建+定制开发 | 0% → 30% |
| 6 | 空箱调拨/返空流程+定制开发 | 0% → 30% |
